Schedule from MS Project, 2016-11-21 to 2016-12-21.
Microsoft

## Calendars

- 标准: Mon-Fri 08:00-12:00, 13:00-17:00; Sat-Sun off.

## Resources

| Resource |
| --- |
| 刘洋 |
| 郑佳铭 |
| 王豪 |
| 幸刚鸿 |
| 秦慧敏 |

## Schedule

| ID | WBS | Task | Duration | Start | Finish | Total slack | Constraint | Resources | Work |
| --- | --- | --- | --- | --- | --- | --- | --- | --- | --- |
| 1 | 1 | **融资租赁开发第一轮迭代** | 22d | 2016-11-21 | 2016-12-21 | 0d |  |  | 448h |
| 2 | 1.1 | **基础档案** | 7d | 2016-11-21 | 2016-11-30 | 15d |  |  | 72h |
| 3 | 1.1.1 | **参数管理** | 2d | 2016-11-24 | 2016-11-28 | 17d |  |  | 16h |
| 4 | 1.1.1.1 | **基础参数设置** | 2d | 2016-11-24 | 2016-11-28 | 17d |  |  |  |
| 5 | 1.1.1.1.1 | 需求反讲 | 1d | 2016-11-24 | 2016-11-25 | 5d | start no earlier than 2016-11-24 |  |  |
| 6 | 1.1.1.1.2 | 编码 | 2d | 2016-11-24 | 2016-11-28 | 4d | start no earlier than 2016-11-24 |  |  |
| 7 | 1.1.1.1.3 | 单元自测 | 1d | 2016-11-24 | 2016-11-25 | 5d | start no earlier than 2016-11-24 |  |  |
| 8 | 1.1.1.2 | **收付类别管理** | 2d | 2016-11-24 | 2016-11-28 | 17d |  | 刘洋 | 16h |
| 9 | 1.1.1.2.1 | 需求反讲 | 2d | 2016-11-24 | 2016-11-28 | 4d | start no earlier than 2016-11-24 |  |  |
| 10 | 1.1.1.2.2 | 编码 | 1d | 2016-11-24 | 2016-11-25 | 5d | start no earlier than 2016-11-24 |  |  |
| 11 | 1.1.1.2.3 | 单元自测 | 1d | 2016-11-24 | 2016-11-25 | 5d | start no earlier than 2016-11-24 |  |  |
| 12 | 1.1.2 | **利率管理** | 3d | 2016-11-25 | 2016-11-30 | 15d |  | 郑佳铭 | 24h |
| 13 | 1.1.2.1 | 需求反讲 | 1d | 2016-11-25 | 2016-11-28 | 7d | start no earlier than 2016-11-25 |  |  |
| 14 | 1.1.2.2 | 编码 | 3d | 2016-11-25 | 2016-11-30 | 5d | start no earlier than 2016-11-25 |  |  |
| 15 | 1.1.2.3 | 单元自测 | 1d | 2016-11-25 | 2016-11-28 | 7d | start no earlier than 2016-11-25 |  |  |
| 16 | 1.1.3 | **租赁设备管理** | 1d | 2016-11-28 | 2016-11-29 | 16d |  | 王豪 | 8h |
| 17 | 1.1.3.1 | 需求反讲 | 1d | 2016-11-28 | 2016-11-29 | 3d | start no earlier than 2016-11-28 |  |  |
| 18 | 1.1.3.2 | 编码 | 1d | 2016-11-28 | 2016-11-29 | 3d | start no earlier than 2016-11-28 |  |  |
| 19 | 1.1.3.3 | 单元自测 | 1d | 2016-11-28 | 2016-11-29 | 3d | start no earlier than 2016-11-28 |  |  |
| 20 | 1.1.4 | **客户管理** | 3d | 2016-11-21 | 2016-11-24 | 19d |  |  | 24h |
| 21 | 1.1.4.1 | 企业移交 | 1d | 2016-11-21 | 2016-11-22 | 8d | start no earlier than 2016-11-21 |  |  |
| 22 | 1.1.4.2 | **模板管理** | 3d | 2016-11-21 | 2016-11-24 | 19d |  | 幸刚鸿 | 24h |
| 23 | 1.1.4.2.1 | 需求反讲 | 1d | 2016-11-21 | 2016-11-22 | 8d | start no earlier than 2016-11-21 |  |  |
| 24 | 1.1.4.2.2 | 编码 | 3d | 2016-11-21 | 2016-11-24 | 6d | start no earlier than 2016-11-21 |  |  |
| 25 | 1.1.4.2.3 | 单元自测 | 1d | 2016-11-21 | 2016-11-22 | 8d | start no earlier than 2016-11-21 |  |  |
| 26 | 1.1.4.3 | 个人客户管理 | 1d | 2016-11-21 | 2016-11-22 | 8d | start no earlier than 2016-11-21 |  |  |
| 27 | 1.1.4.4 | 企业客户 | 1d | 2016-11-21 | 2016-11-22 | 8d | start no earlier than 2016-11-21 |  |  |

| ID | WBS | Task | Duration | Start | Finish | Total slack | Constraint | Resources | Work |
| --- | --- | --- | --- | --- | --- | --- | --- | --- | --- |
| 28 | 1.2 | **租前管理** | 8d | 2016-11-22 | 2016-12-02 | 13d |  |  | 80h |
| 29 | 1.2.1 | **报价测算** | 3d | 2016-11-28 | 2016-12-01 | 14d |  | 刘洋 | 24h |
| 30 | 1.2.1.1 | 需求反讲 | 1d | 2016-11-28 | 2016-11-29 | 3d | start no earlier than 2016-11-28 |  |  |
| 31 | 1.2.1.2 | 编码 | 3d | 2016-11-28 | 2016-12-01 | 1d | start no earlier than 2016-11-28 |  |  |
| 32 | 1.2.1.3 | 单元自测 | 1d | 2016-11-28 | 2016-11-29 | 3d | start no earlier than 2016-11-28 |  |  |
| 33 | 1.2.2 | **立项申请** | 3d | 2016-11-28 | 2016-12-01 | 14d |  | 秦慧敏 | 24h |
| 34 | 1.2.2.1 | 需求反讲 | 1d | 2016-11-28 | 2016-11-29 | 3d | start no earlier than 2016-11-28 |  |  |
| 35 | 1.2.2.2 | 编码 | 3d | 2016-11-28 | 2016-12-01 | 1d | start no earlier than 2016-11-28 |  |  |
| 36 | 1.2.2.3 | 单元自测 | 1d | 2016-11-28 | 2016-11-29 | 3d | start no earlier than 2016-11-28 |  |  |
| 37 | 1.2.3 | **尽职调查（中）** | 2d | 2016-11-22 | 2016-11-24 | 19d |  |  |  |
| 38 | 1.2.3.1 | 需求反讲 | 1d | 2016-11-22 | 2016-11-23 | 7d | start no earlier than 2016-11-22 |  |  |
| 39 | 1.2.3.2 | 编码 | 2d | 2016-11-22 | 2016-11-24 | 6d | start no earlier than 2016-11-22 |  |  |
| 40 | 1.2.3.3 | 单元自测 | 1d | 2016-11-22 | 2016-11-23 | 7d | start no earlier than 2016-11-22 |  |  |
| 41 | 1.2.4 | **项目评审** | 2d | 2016-11-29 | 2016-12-01 | 14d |  | 王豪 | 16h |
| 42 | 1.2.4.1 | 需求反讲 | 1d | 2016-11-29 | 2016-11-30 | 5d | start no earlier than 2016-11-29 |  |  |
| 43 | 1.2.4.2 | 编码 | 2d | 2016-11-29 | 2016-12-01 | 4d | start no earlier than 2016-11-29 |  |  |
| 44 | 1.2.4.3 | 单元自测 | 1d | 2016-11-29 | 2016-11-30 | 5d | start no earlier than 2016-11-29 |  |  |
| 45 | 1.2.5 | **项目复议（中）** | 2d | 2016-11-22 | 2016-11-24 | 19d |  |  |  |
| 46 | 1.2.5.1 | 需求反讲 | 1d | 2016-11-22 | 2016-11-23 | 7d | start no earlier than 2016-11-22 |  |  |
| 47 | 1.2.5.2 | 编码 | 2d | 2016-11-22 | 2016-11-24 | 6d | start no earlier than 2016-11-22 |  |  |
| 48 | 1.2.5.3 | 单元自测 | 1d | 2016-11-22 | 2016-11-23 | 7d | start no earlier than 2016-11-22 |  |  |
| 49 | 1.2.6 | **项目合同** | 2d | 2016-11-30 | 2016-12-02 | 13d |  | 郑佳铭 | 16h |
| 50 | 1.2.6.1 | 需求反讲 | 1d | 2016-11-30 | 2016-12-01 | 1d | start no earlier than 2016-11-30 |  |  |
| 51 | 1.2.6.2 | 编码 | 2d | 2016-11-30 | 2016-12-02 | 3d | start no earlier than 2016-11-30 |  |  |
| 52 | 1.2.6.3 | 单元自测 | 1d | 2016-11-30 | 2016-12-01 | 1d | start no earlier than 2016-11-30 |  |  |

| ID | WBS | Task | Duration | Start | Finish | Total slack | Constraint | Resources | Work |
| --- | --- | --- | --- | --- | --- | --- | --- | --- | --- |
| 53 | 1.3 | **租后管理** | 19d | 2016-11-22 | 2016-12-19 | 2d |  |  | 160h |
| 54 | 1.3.1 | **日常管理** | 3d | 2016-12-01 | 2016-12-06 | 11d |  |  | 24h |
| 55 | 1.3.1.1 | **收付计划表** | 3d | 2016-12-01 | 2016-12-06 | 11d |  | 刘洋 | 24h |
| 56 | 1.3.1.1.1 | 需求反讲 | 1d | 2016-12-01 | 2016-12-02 | 3d | start no earlier than 2016-12-01 |  |  |
| 57 | 1.3.1.1.2 | 编码 | 3d | 2016-12-01 | 2016-12-06 | 1d | start no earlier than 2016-12-01 |  |  |
| 58 | 1.3.1.1.3 | 单元自测 | 1d | 2016-12-01 | 2016-12-02 | 3d | start no earlier than 2016-12-01 |  |  |
| 59 | 1.3.2 | **付款管理（中）** | 4d | 2016-11-22 | 2016-11-28 | 17d |  |  |  |
| 60 | 1.3.2.1 | 需求反讲 | 1d | 2016-11-22 | 2016-11-23 | 7d | start no earlier than 2016-11-22 |  |  |
| 61 | 1.3.2.2 | 编码 | 4d | 2016-11-22 | 2016-11-28 | 4d | start no earlier than 2016-11-22 |  |  |
| 62 | 1.3.2.3 | 单元自测 | 1d | 2016-11-22 | 2016-11-23 | 7d | start no earlier than 2016-11-22 |  |  |
| 63 | 1.3.3 | **收款管理（中）** | 4d | 2016-11-22 | 2016-11-28 | 17d |  |  |  |
| 64 | 1.3.3.1 | 需求反讲 | 1d | 2016-11-22 | 2016-11-23 | 7d | start no earlier than 2016-11-22 |  |  |
| 65 | 1.3.3.2 | 编码 | 4d | 2016-11-22 | 2016-11-28 | 4d | start no earlier than 2016-11-22 |  |  |
| 66 | 1.3.3.3 | 单元自测 | 1d | 2016-11-22 | 2016-11-23 | 7d | start no earlier than 2016-11-22 |  |  |
| 67 | 1.3.4 | **变更管理** | 4d | 2016-12-01 | 2016-12-07 | 10d |  |  | 72h |
| 68 | 1.3.4.1 | **调息管理** | 3d | 2016-12-01 | 2016-12-06 | 11d |  | 秦慧敏 | 24h |
| 69 | 1.3.4.1.1 | 需求反讲 | 1d | 2016-12-01 | 2016-12-02 | 3d | start no earlier than 2016-12-01 |  |  |
| 70 | 1.3.4.1.2 | 编码 | 3d | 2016-12-01 | 2016-12-06 | 1d | start no earlier than 2016-12-01 |  |  |
| 71 | 1.3.4.1.3 | 单元自测 | 1d | 2016-12-01 | 2016-12-02 | 3d | start no earlier than 2016-12-01 |  |  |
| 72 | 1.3.4.2 | **合同变更** | 3d | 2016-12-02 | 2016-12-07 | 10d |  | 郑佳铭 | 24h |
| 73 | 1.3.4.2.1 | 需求反讲 | 1d | 2016-12-02 | 2016-12-05 | 2d | start no earlier than 2016-12-02 |  |  |
| 74 | 1.3.4.2.2 | 编码 | 3d | 2016-12-02 | 2016-12-07 | 11d | start no earlier than 2016-12-02 |  |  |
| 75 | 1.3.4.2.3 | 单元自测 | 1d | 2016-12-02 | 2016-12-05 | 2d | start no earlier than 2016-12-02 |  |  |
| 76 | 1.3.4.3 | **租金计划变更** | 3d | 2016-12-01 | 2016-12-06 | 11d |  | 王豪 | 24h |
| 77 | 1.3.4.3.1 | 需求反讲 | 1d | 2016-12-01 | 2016-12-02 | 3d | start no earlier than 2016-12-01 |  |  |
| 78 | 1.3.4.3.2 | 编码 | 3d | 2016-12-01 | 2016-12-06 | 1d | start no earlier than 2016-12-01 |  |  |
| 79 | 1.3.4.3.3 | 单元自测 | 1d | 2016-12-01 | 2016-12-02 | 3d | start no earlier than 2016-12-01 |  |  |

| ID | WBS | Task | Duration | Start | Finish | Total slack | Constraint | Resources | Work |
| --- | --- | --- | --- | --- | --- | --- | --- | --- | --- |
| 80 | 1.3.5 | **逾期管理** | 16d | 2016-11-22 | 2016-12-14 | 5d |  |  | 40h |
| 81 | 1.3.5.1 | **逾期催收（中）** | 5d | 2016-11-22 | 2016-11-29 | 16d |  |  |  |
| 82 | 1.3.5.1.1 | 需求反讲 | 1d | 2016-11-22 | 2016-11-23 | 10d | start no earlier than 2016-11-22 |  |  |
| 83 | 1.3.5.1.2 | 编码 | 5d | 2016-11-22 | 2016-11-29 | 6d | start no earlier than 2016-11-22 |  |  |
| 84 | 1.3.5.1.3 | 单元自测 | 1d | 2016-11-22 | 2016-11-23 | 10d | start no earlier than 2016-11-22 |  |  |
| 85 | 1.3.5.2 | **逾期罚息** | 3d | 2016-12-09 | 2016-12-14 | 5d |  | 刘洋 | 24h |
| 86 | 1.3.5.2.1 | 需求反讲 | 1d | 2016-12-09 | 2016-12-12 | 8d | start no earlier than 2016-12-09 |  |  |
| 87 | 1.3.5.2.2 | 编码 | 3d | 2016-12-09 | 2016-12-14 | 6d | start no earlier than 2016-12-09 |  |  |
| 88 | 1.3.5.2.3 | 单元自测 | 1d | 2016-12-09 | 2016-12-12 | 8d | start no earlier than 2016-12-09 |  |  |
| 89 | 1.3.5.3 | **逾期减免** | 2d | 2016-12-12 | 2016-12-14 | 5d |  | 秦慧敏 | 16h |
| 90 | 1.3.5.3.1 | 需求反讲 | 1d | 2016-12-12 | 2016-12-13 | 7d | start no earlier than 2016-12-12 |  |  |
| 91 | 1.3.5.3.2 | 编码 | 2d | 2016-12-12 | 2016-12-14 | 6d | start no earlier than 2016-12-12 |  |  |
| 92 | 1.3.5.3.3 | 单元自测 | 1d | 2016-12-12 | 2016-12-13 | 7d | start no earlier than 2016-12-12 |  |  |
| 93 | 1.3.6 | **资产管理** | 3d | 2016-12-14 | 2016-12-19 | 2d |  | 郑佳铭 | 24h |
| 94 | 1.3.6.1 | **项目租赁物管理** | 3d | 2016-12-14 | 2016-12-19 | 2d |  |  |  |
| 95 | 1.3.6.1.1 | 需求反讲 | 1d | 2016-12-14 | 2016-12-15 | 5d | start no earlier than 2016-12-14 |  |  |
| 96 | 1.3.6.1.2 | 编码 | 3d | 2016-12-14 | 2016-12-19 | 3d | start no earlier than 2016-12-14 |  |  |
| 97 | 1.3.6.1.3 | 单元自测 | 1d | 2016-12-14 | 2016-12-15 | 5d | start no earlier than 2016-12-14 |  |  |
| 98 | 1.4 | **风险管理** | 3d | 2016-12-12 | 2016-12-15 | 4d |  |  | 24h |
| 99 | 1.4.1 | **资产风险分类** | 3d | 2016-12-12 | 2016-12-15 | 4d |  | 王豪 | 24h |
| 100 | 1.4.1.1 | 需求反讲 | 1d | 2016-12-12 | 2016-12-13 | 7d | start no earlier than 2016-12-12 |  |  |
| 101 | 1.4.1.2 | 编码 | 3d | 2016-12-12 | 2016-12-15 | 5d | start no earlier than 2016-12-12 |  |  |
| 102 | 1.4.1.3 | 单元自测 | 1d | 2016-12-12 | 2016-12-13 | 7d | start no earlier than 2016-12-12 |  |  |
| 103 | 1.5 | **基本报表** | 5d | 2016-12-14 | 2016-12-21 | 0d |  |  | 112h |
| 104 | 1.5.1 | **项目进度查询** | 2d | 2016-12-14 | 2016-12-16 | 3d |  | 刘洋 | 16h |
| 105 | 1.5.1.1 | 需求反讲 | 1d | 2016-12-14 | 2016-12-15 | 5d | start no earlier than 2016-12-14 |  |  |
| 106 | 1.5.1.2 | 编码 | 2d | 2016-12-14 | 2016-12-16 | 4d | start no earlier than 2016-12-14 |  |  |
| 107 | 1.5.1.3 | 单元自测 | 1d | 2016-12-14 | 2016-12-15 | 5d | start no earlier than 2016-12-14 |  |  |

| ID | WBS | Task | Duration | Start | Finish | Total slack | Constraint | Resources | Work |
| --- | --- | --- | --- | --- | --- | --- | --- | --- | --- |
| 108 | 1.5.2 | **合同台账** | 4d | 2016-12-15 | 2016-12-21 | 0d |  |  | 32h |
| 109 | 1.5.2.1 | **合同台账余额** | 2d | 2016-12-15 | 2016-12-19 | 2d |  | 王豪 | 16h |
| 110 | 1.5.2.1.1 | 需求反讲 | 1d | 2016-12-15 | 2016-12-16 | 4d | start no earlier than 2016-12-15 |  |  |
| 111 | 1.5.2.1.2 | 编码 | 2d | 2016-12-15 | 2016-12-19 | 3d | start no earlier than 2016-12-15 |  |  |
| 112 | 1.5.2.1.3 | 单元自测 | 1d | 2016-12-15 | 2016-12-16 | 4d | start no earlier than 2016-12-15 |  |  |
| 113 | 1.5.2.2 | **合同台账明细** | 2d | 2016-12-19 | 2016-12-21 | 0d |  | 郑佳铭 | 16h |
| 114 | 1.5.2.2.1 | 需求反讲 | 1d | 2016-12-19 | 2016-12-20 | 2d | start no earlier than 2016-12-19 |  |  |
| 115 | 1.5.2.2.2 | 编码 | 2d | 2016-12-19 | 2016-12-21 | 0d | start no earlier than 2016-12-19 |  |  |
| 116 | 1.5.2.2.3 | 单元自测 | 1d | 2016-12-19 | 2016-12-20 | 2d | start no earlier than 2016-12-19 |  |  |
| 117 | 1.5.3 | **辅助服务功能** | 3d | 2016-12-14 | 2016-12-19 | 2d |  | 秦慧敏 | 64h |
| 118 | 1.5.3.1 | **收租预警管理** | 2d | 2016-12-14 | 2016-12-16 | 3d |  | 秦慧敏 | 24h |
| 119 | 1.5.3.1.1 | 需求反讲 | 1d | 2016-12-14 | 2016-12-15 | 4d | start no earlier than 2016-12-14 |  |  |
| 120 | 1.5.3.1.2 | 编码 | 2d | 2016-12-14 | 2016-12-16 | 3d | start no earlier than 2016-12-14 |  |  |
| 121 | 1.5.3.1.3 | 单元自测 | 1d | 2016-12-14 | 2016-12-15 | 4d | start no earlier than 2016-12-14 | 秦慧敏 | 8h |
| 122 | 1.5.3.2 | **到期预警通知** | 1d | 2016-12-16 | 2016-12-19 | 2d |  | 秦慧敏 | 8h |
| 123 | 1.5.3.2.1 | 需求反讲 | 1d | 2016-12-16 | 2016-12-19 | 2d | start no earlier than 2016-12-16 |  |  |
| 124 | 1.5.3.2.2 | 编码 | 1d | 2016-12-16 | 2016-12-19 | 2d | start no earlier than 2016-12-16 |  |  |
| 125 | 1.5.3.2.3 | 单元自测 | 1d | 2016-12-16 | 2016-12-19 | 2d | start no earlier than 2016-12-16 |  |  |
| 126 | 1.5.3.3 | **逾期预警通知** | 1d | 2016-12-16 | 2016-12-19 | 2d |  | 秦慧敏 | 8h |
| 127 | 1.5.3.3.1 | 需求反讲 | 1d | 2016-12-16 | 2016-12-19 | 3d | start no earlier than 2016-12-16 |  |  |
| 128 | 1.5.3.3.2 | 编码 | 1d | 2016-12-16 | 2016-12-19 | 3d | start no earlier than 2016-12-16 |  |  |
| 129 | 1.5.3.3.3 | 单元自测 | 1d | 2016-12-16 | 2016-12-19 | 3d | start no earlier than 2016-12-16 |  |  |
